# Insiths_07.12.21

Schedule from MS Project, 2021-09-10 to 2022-07-12, costs in R$, A marks actual dates.

## Calendars

- Padrão: Mon-Fri 09:00-12:00, 13:00-18:00; Sat-Sun off. Exceptions (off unless hours are given): 2021-12-04 to 2021-12-05 09:00-12:00, 13:00-18:00.

## Resources

| Resource | Group | Rate |
| --- | --- | --- |
| Leonardo | 100% | 200 |
| Ivan | 100% | 200 |
| Lucas | 100% | 200 |
| Cliente |  |  |

## Schedule

| ID | WBS | Task | Type | Duration | Start | Finish | Predecessors | Complete | Remaining | Baseline start | Baseline finish | Baseline duration | Total slack | Resources | Work | Actual work | Cost | Baseline cost | Actual cost |
| --- | --- | --- | --- | --- | --- | --- | --- | --- | --- | --- | --- | --- | --- | --- | --- | --- | --- | --- | --- |
| 1 | 1 | **INSIGHTS** |  | 220d | 2021-09-10 09:00 A | 2022-07-12 19:40 |  | 99% | 0d | 2021-09-10 09:00 | 2022-03-15 19:35 | 135d | 0d |  | 122.24h | 122.24h | 24,648.93 | 32,106 | 24,648.93 |
| 2 | 1.1 | **Prospecção** |  | 15d | 2021-09-10 09:00 A | 2021-09-30 23:30 A |  | 100% |  | 2021-09-10 09:00 | 2021-09-30 22:30 | 15d |  |  | 17.8h | 17.8h | 3,560 | 2,660 | 3,560 |
| 3 | 1.1.1 | Pedido do Serviço/produto |  | 16.54h | 2021-09-10 09:00 A | 2021-09-14 09:32 A |  | 100% |  | 2021-09-10 09:00 | 2021-09-14 09:32 | 16.54h |  |  |  |  |  |  |  |
| 4 | 1.1.2 | **PTEC** |  | 7d | 2021-09-14 19:00 A | 2021-09-24 09:00 A |  | 100% |  | 2021-09-14 19:00 | 2021-09-23 23:30 | 7d |  |  | 12h | 12h | 2,400 | 1,800 | 2,400 |
| 5 | 1.1.2.1 | Estudar dominio de aplicação |  | 6h | 2021-09-14 19:00 A | 2021-09-21 20:00 A | 3 | 100% |  | 2021-09-14 19:00 | 2021-09-16 22:30 | 4h |  | Lucas | 6h | 6h | 1,200 | 800 | 1,200 |
| 6 | 1.1.2.2 | Reuninir com o cliente |  | 1h | 2021-09-16 22:30 A | 2021-09-16 23:30 A | 5 | 100% |  | 2021-09-16 22:30 | 2021-09-16 23:30 | 1h |  | Leonardo | 1h | 1h | 200 | 200 | 200 |
| 7 | 1.1.2.3 | Redigir PTEC |  | 4h | 2021-09-21 19:00 A | 2021-09-23 22:30 A | 6 | 100% |  | 2021-09-21 19:00 | 2021-09-23 21:30 | 3h |  | Ivan | 4h | 4h | 800 | 600 | 800 |
| 8 | 1.1.2.4 | Revisar PTEC |  | 2h | 2021-09-23 21:30 A | 2021-09-23 23:30 A | 7 | 100% |  | 2021-09-23 21:30 | 2021-09-23 23:30 | 2h |  | Ivan [50%] | 1h | 1h | 200 | 200 | 200 |
| 9 | 1.1.2.5 | Aprovar PTEC | milestone | 0h | 2021-09-24 09:00 A | 2021-09-24 09:00 A | 8 | 100% |  | 2021-09-23 23:30 | 2021-09-23 23:30 | 0h |  | Ivan |  |  |  |  |  |
| 10 | 1.1.3 | **Estimativa preliminar de Tamanho** |  | 0d | 2021-09-28 19:00 A | 2021-09-28 20:18 A |  | 100% |  | 2021-09-28 19:00 | 2021-09-28 20:18 | 0d |  |  | 1.3h | 1.3h | 260 | 260 | 260 |
| 11 | 1.1.3.1 | Estimar Tamanho do projeto |  | 1h | 2021-09-28 19:00 A | 2021-09-28 20:00 A | 9 | 100% |  | 2021-09-28 19:00 | 2021-09-28 20:00 | 1h |  | Lucas | 1h | 1h | 200 | 200 | 200 |
| 12 | 1.1.3.2 | Revisar Estimativa Prel. Tam |  | 0.3h | 2021-09-28 20:00 A | 2021-09-28 20:18 A | 11 | 100% |  | 2021-09-28 20:00 | 2021-09-28 20:18 | 0.3h |  | Leonardo | 0.3h | 0.3h | 60 | 60 | 60 |
| 13 | 1.1.4 | **Est. Prel. Cronograma/ Orçamento Preliminar** |  | 2d | 2021-09-28 20:00 A | 2021-09-30 23:30 A |  | 100% |  | 2021-09-28 20:00 | 2021-09-30 22:30 | 2d |  |  | 4.5h | 4.5h | 900 | 600 | 900 |
| 14 | 1.1.4.1 | Elaborar Cronograma/ Orçamento Preliminar |  | 4h | 2021-09-28 20:00 A | 2021-09-30 23:30 A | 11 | 100% |  | 2021-09-28 20:00 | 2021-09-30 21:30 | 2h |  | Ivan | 4h | 4h | 800 | 400 | 800 |
| 15 | 1.1.4.2 | Revisar estimativas de Cronograma/ Orçamento Prel. |  | 0.5h | 2021-09-30 21:30 A | 2021-09-30 22:00 A | 14 | 100% |  | 2021-09-30 21:30 | 2021-09-30 22:30 | 1h |  | Lucas | 0.5h | 0.5h | 100 | 200 | 100 |
| 16 | 1.2 | **Analise** |  | 28d | 2021-09-10 09:00 A | 2021-10-19 20:02 A |  | 100% |  | 2021-09-10 09:00 | 2021-10-19 20:44 | 30d |  |  | 14.3h | 14.3h | 2,859.93 | 5,002 | 2,859.93 |
| 17 | 1.2.1 | **Documentos de Requisitos** |  | 23d | 2021-09-10 09:00 A | 2021-10-12 20:00 A |  | 100% |  | 2021-09-10 09:00 | 2021-10-12 21:00 | 24d |  |  | 10h | 10h | 2,000 | 3,200 | 2,000 |
| 18 | 1.2.1.1 | Reuninir com o cliente |  | 1h | 2021-09-30 22:30 A | 2021-09-30 23:30 A | 15 | 100% |  | 2021-09-30 22:30 | 2021-10-07 21:30 | 4h |  | Ivan | 1h | 1h | 200 | 800 | 200 |
| 19 | 1.2.1.2 | Elaborar DRE |  | 8h | 2021-10-07 21:30 A | 2021-10-09 06:00 A | 18 | 100% |  | 2021-10-07 21:30 | 2021-10-09 18:00 | 10h |  | Lucas | 8h | 8h | 1,600 | 2,000 | 1,600 |
| 20 | 1.2.1.3 | Revisar DRE |  | 1h | 2021-10-12 19:00 A | 2021-10-12 20:00 A | 19 | 100% |  | 2021-10-12 19:00 | 2021-10-12 21:00 | 2h |  | Ivan | 1h | 1h | 200 | 400 | 200 |
| 21 | 1.2.1.4 | Submeter DRE para aprovação do cliente | milestone | 0h | 2021-09-10 09:00 A | 2021-09-10 09:00 A |  | 100% |  | 2021-09-10 09:00 | 2021-09-10 09:00 | 0h |  | Cliente |  |  |  |  |  |
| 22 | 1.2.2 | **Matriz RB** |  | 5d | 2021-10-12 21:00 A | 2021-10-19 20:02 A |  | 100% |  | 2021-10-12 21:00 | 2021-10-19 20:44 | 6d |  |  | 4.3h | 4.3h | 859.93 | 1,802 | 859.93 |
| 23 | 1.2.2.1 | Elaborar MRB |  | 7.5h | 2021-10-12 21:00 A | 2021-10-16 04:29 A | 20 | 100% |  | 2021-10-12 21:00 | 2021-10-19 19:44 | 11.74h |  | Lucas | 4h | 4h | 799.93 | 1,602 | 799.93 |
| 24 | 1.2.2.2 | Revisar MRB |  | 0.3h | 2021-10-19 19:44 A | 2021-10-19 20:02 A | 23 | 100% |  | 2021-10-19 19:44 | 2021-10-19 20:44 | 1h |  | Leonardo | 0.3h | 0.3h | 60 | 200 | 60 |

| ID | WBS | Task | Duration | Start | Finish | Predecessors | Complete | Baseline start | Baseline finish | Baseline duration | Resources | Work | Actual work | Cost | Baseline cost | Actual cost |
| --- | --- | --- | --- | --- | --- | --- | --- | --- | --- | --- | --- | --- | --- | --- | --- | --- |
| 25 | 1.3 | **Planejamento** | 3d | 2021-10-12 21:00 A | 2021-10-16 16:08 A |  | 100% | 2021-10-12 21:00 | 2021-10-16 16:08 | 3.77d |  | 11h | 11h | 2,200 | 2,628 | 2,200 |
| 26 | 1.3.1 | **Plano Gerenciamento do Projeto** | 3d | 2021-10-12 21:00 A | 2021-10-16 13:08 A |  | 100% | 2021-10-12 21:00 | 2021-10-16 14:08 | 3.52d |  | 7.5h | 7.5h | 1,500 | 1,728 | 1,500 |
| 27 | 1.3.1.1 | Definição do escopo | 1.5h | 2021-10-12 21:00 A | 2021-10-14 22:00 A | 20 | 100% | 2021-10-12 21:00 | 2021-10-14 21:38 | 1.14h | Leonardo | 1.5h | 1.5h | 300 | 228 | 300 |
| 28 | 1.3.1.2 | Cronograma definitivo | 2h | 2021-10-14 21:38 A | 2021-10-16 09:08 A | 27 | 100% | 2021-10-14 21:38 | 2021-10-16 09:08 | 2h | Ivan | 2h | 2h | 400 | 400 | 400 |
| 29 | 1.3.1.3 | Orçamento definitivo | 1h | 2021-10-16 09:08 A | 2021-10-16 10:08 A | 28 | 100% | 2021-10-16 09:08 | 2021-10-16 10:38 | 1.5h | Leonardo | 1h | 1h | 200 | 300 | 200 |
| 30 | 1.3.1.4 | Analise de riscos | 3h | 2021-10-16 09:08 A | 2021-10-16 13:08 A | 28 | 100% | 2021-10-16 09:08 | 2021-10-16 14:08 | 4h | Ivan | 3h | 3h | 600 | 800 | 600 |
| 31 | 1.3.2 | **Plano de Trabalho** | 0d | 2021-10-16 10:38 A | 2021-10-16 16:08 A |  | 100% | 2021-10-16 10:38 | 2021-10-16 16:08 | 0.56d |  | 3.5h | 3.5h | 700 | 900 | 700 |
| 32 | 1.3.2.1 | Plano Pojeto (UML) | 2h | 2021-10-16 10:38 A | 2021-10-16 13:38 A | 29 | 100% | 2021-10-16 10:38 | 2021-10-16 14:38 | 3h | Leonardo | 2h | 2h | 400 | 600 | 400 |
| 33 | 1.3.2.2 | Plano de Desenvolvimento | 1h | 2021-10-16 14:38 A | 2021-10-16 15:38 A | 32 | 100% | 2021-10-16 14:38 | 2021-10-16 15:38 | 1h | Ivan | 1h | 1h | 200 | 200 | 200 |
| 34 | 1.3.2.3 | Plano de Teste | 0.5h | 2021-10-16 15:38 A | 2021-10-16 16:08 A | 33 | 100% | 2021-10-16 15:38 | 2021-10-16 16:08 | 0.5h | Leonardo | 0.5h | 0.5h | 100 | 100 | 100 |
| 35 | 1.4 | **Projeto** | 5d | 2021-10-19 19:44 A | 2021-10-26 19:02 A |  | 100% | 2021-10-19 19:44 | 2021-10-26 19:02 | 5d |  | 6.2h | 6.2h | 1,040 | 1,100 | 1,040 |
| 36 | 1.4.1 | **Diagrama de classe** | 0d | 2021-10-19 19:44 A | 2021-10-19 21:02 A |  | 100% | 2021-10-19 19:44 | 2021-10-19 21:08 | 0d |  | 1.3h | 1.3h | 260 | 280 | 260 |
| 37 | 1.4.1.1 | Elaborar diagrama de classe | 1h | 2021-10-19 19:44 A | 2021-10-19 20:44 A | 23 | 100% | 2021-10-19 19:44 | 2021-10-19 20:44 | 1h | Lucas | 1h | 1h | 200 | 200 | 200 |
| 38 | 1.4.1.2 | Revisar diagrama de classe | 0.3h | 2021-10-19 20:44 A | 2021-10-19 21:02 A | 37 | 100% | 2021-10-19 20:44 | 2021-10-19 21:08 | 0.4h | Lucas | 0.3h | 0.3h | 60 | 80 | 60 |
| 39 | 1.4.2 | **Diagrama de contexto** | 2d | 2021-10-19 20:44 A | 2021-10-21 21:32 A |  | 100% | 2021-10-19 20:44 | 2021-10-21 21:38 | 2d |  | 1.3h | 1.3h | 260 | 280 | 260 |
| 40 | 1.4.2.1 | Elaborar diagrama de contexto | 1h | 2021-10-19 20:44 A | 2021-10-21 21:14 A | 37 | 100% | 2021-10-19 20:44 | 2021-10-21 21:14 | 1h | Lucas | 1h | 1h | 200 | 200 | 200 |
| 41 | 1.4.2.2 | Revisar diagrama de contexto | 0.3h | 2021-10-21 21:14 A | 2021-10-21 21:32 A | 40 | 100% | 2021-10-21 21:14 | 2021-10-21 21:38 | 0.4h | Leonardo | 0.3h | 0.3h | 60 | 80 | 60 |
| 42 | 1.4.3 | **Dicionario de Dados** | 0.12d | 2021-10-21 21:14 A | 2021-10-22 10:00 A |  | 100% | 2021-10-21 21:14 | 2021-10-22 09:45 | 0.09d |  | 2.3h | 2.3h | 260 | 280 | 260 |
| 43 | 1.4.3.1 | Criar Dicionarios | 1h | 2021-10-21 21:14 A | 2021-10-21 22:14 A | 40 | 100% | 2021-10-21 21:14 | 2021-10-21 22:14 | 1h | Ivan | 1h | 1h | 200 | 200 | 200 |
| 44 | 1.4.3.2 | Revisar Dicionário | 0.3h | 2021-10-21 22:14 A | 2021-10-21 22:32 A | 43 | 100% | 2021-10-21 22:14 | 2021-10-21 22:38 | 0.4h | Lucas | 0.3h | 0.3h | 60 | 80 | 60 |
| 45 | 1.4.3.3 | Atualizar MRB | 1h | 2021-10-22 09:00 A | 2021-10-22 10:00 A | 43 | 100% | 2021-10-22 09:00 | 2021-10-22 09:45 | 0.75h |  | 1h | 1h |  |  |  |
| 46 | 1.4.4 | **Modelo Entidade Relacionamento** | 3d | 2021-10-21 22:14 A | 2021-10-26 19:02 A |  | 100% | 2021-10-21 22:14 | 2021-10-26 19:02 | 3d |  | 1.3h | 1.3h | 260 | 260 | 260 |
| 47 | 1.4.4.1 | Elaborar MER | 1h | 2021-10-21 22:14 A | 2021-10-21 23:14 A | 43 | 100% | 2021-10-21 22:14 | 2021-10-21 23:14 | 1h | Ivan | 1h | 1h | 200 | 200 | 200 |
| 48 | 1.4.4.2 | Revisar MER | 0.3h | 2021-10-21 23:14 A | 2021-10-26 19:02 A | 47 | 100% | 2021-10-21 23:14 | 2021-10-26 19:02 | 0.3h | Ivan | 0.3h | 0.3h | 60 | 60 | 60 |

| ID | WBS | Task | Duration | Start | Finish | Predecessors | Complete | Baseline start | Baseline finish | Baseline duration | Constraint | Resources | Work | Actual work | Cost | Baseline cost | Actual cost |
| --- | --- | --- | --- | --- | --- | --- | --- | --- | --- | --- | --- | --- | --- | --- | --- | --- | --- |
| 49 | 1.5 | **Desenvolvimento** | 65d | 2021-10-26 19:00 A | 2022-01-22 12:30 A |  | 100% | 2021-10-26 19:00 | 2022-03-08 19:35 | 95d |  |  | 56.5h | 56.5h | 11,700 | 16,896 | 11,700 |
| 50 | 1.5.1 | **Release 01** | 25d | 2021-10-26 19:00 A | 2021-11-30 21:00 A |  | 100% | 2021-10-26 19:00 | 2021-11-18 21:06 | 17d |  |  | 38h | 38h | 7,600 | 5,320 | 7,600 |
| 51 | 1.5.1.1 | **Implementar RFC01- Manter Cliente** | 10d | 2021-10-26 19:00 A | 2021-11-09 21:00 A |  | 100% | 2021-10-26 19:00 | 2021-11-09 21:00 | 10d |  |  | 18h | 18h | 3,600 | 3,200 | 3,600 |
| 52 | 1.5.1.1.1 | [RFS01] Inserir Cliente | 5h | 2021-10-26 19:00 A | 2021-10-28 23:30 A | 45 | 100% | 2021-10-26 19:00 | 2021-10-28 22:30 | 4h |  | Leonardo | 5h | 5h | 1,000 | 800 | 1,000 |
| 53 | 1.5.1.1.2 | [RFS02] Consultar Cliente | 5h | 2021-10-28 22:30 A | 2021-11-04 22:30 A | 52 | 100% | 2021-10-28 22:30 | 2021-11-04 21:30 | 4h |  | Lucas | 5h | 5h | 1,000 | 800 | 1,000 |
| 54 | 1.5.1.1.3 | [RFS03] Editar Cliente | 4h | 2021-11-04 21:30 A | 2021-11-09 21:00 A | 53 | 100% | 2021-11-04 21:30 | 2021-11-09 21:00 | 4h |  | Leonardo | 4h | 4h | 800 | 800 | 800 |
| 55 | 1.5.1.1.4 | [RFS04] Remover Cliente | 4h | 2021-10-28 22:30 A | 2021-11-04 21:30 A | 52 | 100% | 2021-10-28 22:30 | 2021-11-04 21:30 | 4h |  | Ivan | 4h | 4h | 800 | 800 | 800 |
| 56 | 1.5.1.2 | **Implementar RFC04 - Manter Assessor** | 18d | 2021-11-04 21:30 A | 2021-11-30 20:00 A |  | 100% | 2021-11-04 21:30 | 2021-11-16 20:36 | 8d |  |  | 18h | 18h | 3,600 | 1,720 | 3,600 |
| 57 | 1.5.1.2.1 | [RFS10] Inserir Assessor | 5h | 2021-11-04 21:30 A | 2021-11-11 21:30 A | 55 | 100% | 2021-11-04 21:30 | 2021-11-09 19:30 | 2.5h |  | Ivan | 5h | 5h | 1,000 | 500 | 1,000 |
| 58 | 1.5.1.2.2 | [RFS11] Consultar Assessor | 5h | 2021-11-11 21:30 A | 2021-11-18 21:30 A | 57 | 100% | 2021-11-09 19:30 | 2021-11-09 21:30 | 2h |  | Ivan | 5h | 5h | 1,000 | 400 | 1,000 |
| 59 | 1.5.1.2.3 | [RFS12] Editar Assessor | 4h | 2021-11-18 21:30 A | 2021-11-23 21:00 A | 58 | 100% | 2021-11-11 21:00 | 2021-11-11 23:00 | 2h |  | Ivan | 4h | 4h | 800 | 400 | 800 |
| 60 | 1.5.1.2.4 | [RFS13] Remover Assessor | 4h | 2021-11-23 21:00 A | 2021-11-30 20:00 A | 59 | 100% | 2021-11-11 23:00 | 2021-11-16 20:36 | 2.1h |  | Ivan | 4h | 4h | 800 | 420 | 800 |
| 61 | 1.5.1.3 | **Teste** | 18d | 2021-11-04 21:30 A | 2021-11-30 21:00 A |  | 100% | 2021-11-04 21:30 | 2021-11-18 21:06 | 10d |  |  | 2h | 2h | 400 | 400 | 400 |
| 62 | 1.5.1.3.1 | Testar RFC01 - Manter Cliente | 1h | 2021-11-04 21:30 A | 2021-11-04 22:30 A | 55 | 100% | 2021-11-04 21:30 | 2021-11-04 22:30 | 1h |  | Lucas | 1h | 1h | 200 | 200 | 200 |
| 63 | 1.5.1.3.2 | Testar RFC02 - Manter Consultor | 1h | 2021-11-30 20:00 A | 2021-11-30 21:00 A | 60 | 100% | 2021-11-16 20:36 | 2021-11-18 21:06 | 1h |  | Lucas | 1h | 1h | 200 | 200 | 200 |
| 64 | 1.5.2 | **Release 02** | 8d | 2021-11-30 09:00 A | 2021-12-07 20:00 A |  | 100% | 2021-11-18 21:06 | 2021-12-21 20:55 | 23d |  |  | 5h | 5h | 1,400 | 4,370 | 1,400 |
| 65 | 1.5.2.1 | **Implementar RFC03 - Manter Carteira** | 8d | 2021-11-30 09:00 A | 2021-12-07 20:00 A |  | 100% | 2021-11-18 21:06 | 2021-12-14 21:04 | 18d |  |  | 3h | 3h | 800 | 3,200 | 800 |
| 66 | 1.5.2.1.1 | [RFS06] Inserir Carteira de Ativos | 1.6h | 2021-11-30 09:00 A | 2021-11-30 19:36 A | 63 | 100% | 2021-11-18 21:06 | 2021-11-25 22:30 | 6.4h | finish no earlier than 2021-12-04 19:00 | Lucas | 1h | 1h | 200 | 800 | 200 |
| 67 | 1.5.2.1.2 | [RFS07] Consultar Carteira de Ativos | 1h | 2021-12-04 09:00 A | 2021-12-05 14:30 A | 66 | 100% | 2021-11-25 22:30 | 2021-12-07 19:40 | 6.67h | finish no earlier than 2021-12-05 19:00 | Lucas | 1h | 1h | 400 | 800 | 400 |
| 68 | 1.5.2.1.3 | [RFS09] Remover Carteira de Ativos | 1h | 2021-12-07 19:00 A | 2021-12-07 20:00 A | 67 | 100% | 2021-12-07 19:40 | 2021-12-14 21:04 | 6.4h |  | Lucas | 1h | 1h | 200 | 800 | 200 |
| 69 | 1.5.2.2 | **Implementar RFC02 - Consultar Ativo** | 0.12d | 2021-12-04 09:00 A | 2021-12-04 10:00 A |  | 100% | 2021-12-14 21:04 | 2021-12-21 19:55 | 5d |  |  | 1h | 1h | 400 | 770 | 400 |
| 70 | 1.5.2.2.1 | [RF05] Consultar e/ou Selecionar Ativos | 1h | 2021-12-04 09:00 A | 2021-12-04 10:00 A | 63 | 100% | 2021-12-14 21:04 | 2021-12-21 19:55 | 3.85h |  | Leonardo | 1h | 1h | 400 | 770 | 400 |
| 71 | 1.5.2.3 | **Teste** | 3d | 2021-12-05 09:00 A | 2021-12-07 19:30 A |  | 100% | 2021-12-14 21:04 | 2021-12-21 20:55 | 5d |  |  | 1h | 1h | 200 | 400 | 200 |
| 72 | 1.5.2.3.1 | Testar RFC03 - Manter carteira | 0.5h | 2021-12-05 09:00 A | 2021-12-05 09:30 A | 68 | 100% | 2021-12-14 21:04 | 2021-12-16 21:34 | 1h |  | Leonardo | 0.5h | 0.5h | 100 | 200 | 100 |
| 73 | 1.5.2.3.2 | Testar RFC - Consultar Ativo | 0.5h | 2021-12-05 09:00 A | 2021-12-07 19:30 A | 70 | 100% | 2021-12-21 19:55 | 2021-12-21 20:55 | 1h |  | Ivan | 0.5h | 0.5h | 100 | 200 | 100 |

| ID | WBS | Task | Duration | Start | Finish | Predecessors | Complete | Baseline start | Baseline finish | Baseline duration | Resources | Work | Actual work | Cost | Baseline cost | Actual cost |
| --- | --- | --- | --- | --- | --- | --- | --- | --- | --- | --- | --- | --- | --- | --- | --- | --- |
| 74 | 1.5.3 | **Release 03** | 22d | 2021-12-07 19:30 A | 2022-01-06 22:30 A |  | 100% | 2021-12-21 20:55 | 2022-01-25 19:55 | 25d |  | 3h | 3h | 600 | 1,800 | 600 |
| 75 | 1.5.3.1 | [RFS14] Gerar Relatório Gráfico de cotas dos Ativos | 1h | 2021-12-07 19:30 A | 2021-12-07 20:30 A | 73 | 100% | 2021-12-21 20:55 | 2022-01-06 21:55 | 11.5h | Lucas | 1h | 1h | 200 | 700 | 200 |
| 76 | 1.5.3.2 | [RFS15] Gerar Relatório Gráfico de Retorno acumulado | 1h | 2021-12-21 21:00 A | 2021-12-23 21:30 A | 75 | 100% | 2022-01-06 21:55 | 2022-01-20 23:25 | 11.5h | Lucas | 1h | 1h | 200 | 700 | 200 |
| 77 | 1.5.3.3 | **Teste** | 12d | 2021-12-21 21:00 A | 2022-01-06 22:30 A |  | 100% | 2022-01-06 21:55 | 2022-01-25 19:55 | 13d |  | 1h | 1h | 200 | 400 | 200 |
| 78 | 1.5.3.3.1 | Testar RFS14 | 0.5h | 2021-12-21 21:00 A | 2021-12-21 21:30 A | 75 | 100% | 2022-01-06 21:55 | 2022-01-06 22:55 | 1h | Ivan | 0.5h | 0.5h | 100 | 200 | 100 |
| 79 | 1.5.3.3.2 | Testar RFS15 | 0.5h | 2022-01-06 22:00 A | 2022-01-06 22:30 A | 76 | 100% | 2022-01-20 23:25 | 2022-01-25 19:55 | 1h | Leonardo | 0.5h | 0.5h | 100 | 200 | 100 |
| 80 | 1.5.4 | **Release 04** | 3d | 2022-01-06 22:00 A | 2022-01-11 20:30 A |  | 100% | 2022-01-20 23:25 | 2022-02-01 20:55 | 8d |  | 3h | 3h | 600 | 1,800 | 600 |
| 81 | 1.5.4.1 | [RFS16] Gerar Relatório Retorno Diário | 1h | 2022-01-06 22:00 A | 2022-01-06 23:00 A | 76 | 100% | 2022-01-20 23:25 | 2022-01-27 21:55 | 3.5h | Lucas | 1h | 1h | 200 | 700 | 200 |
| 82 | 1.5.4.2 | [RFS17] Gerar Relatório Drawdown | 1h | 2022-01-11 19:00 A | 2022-01-11 20:00 A | 81 | 100% | 2022-01-27 21:55 | 2022-02-01 20:55 | 3.5h | Ivan | 1h | 1h | 200 | 700 | 200 |
| 83 | 1.5.4.3 | **Teste** | 0d | 2022-01-11 19:00 A | 2022-01-11 20:30 A |  | 100% | 2022-01-27 21:55 | 2022-02-01 19:25 | 3d |  | 1h | 1h | 200 | 400 | 200 |
| 84 | 1.5.4.3.1 | Testar RFS16 | 0.5h | 2022-01-11 19:00 A | 2022-01-11 19:30 A | 81 | 100% | 2022-01-27 21:55 | 2022-01-27 22:55 | 1h | Leonardo | 0.5h | 0.5h | 100 | 200 | 100 |
| 85 | 1.5.4.3.2 | Testar RFC17 | 0.5h | 2022-01-11 20:00 A | 2022-01-11 20:30 A | 84 | 100% | 2022-01-27 22:55 | 2022-02-01 19:25 | 1h | Lucas | 0.5h | 0.5h | 100 | 200 | 100 |
| 86 | 1.5.5 | **Release 05** | 5d | 2022-01-11 21:00 A | 2022-01-18 20:30 A |  | 100% | 2022-02-01 19:25 | 2022-02-08 21:25 | 5d |  | 3h | 3h | 600 | 1,800 | 600 |
| 87 | 1.5.5.1 | [RFS18] Gerar Relatório de matriz de correlação | 1h | 2022-01-11 21:00 A | 2022-01-13 21:30 A | 85 | 100% | 2022-02-01 19:25 | 2022-02-03 22:25 | 3.5h | Leonardo | 1h | 1h | 200 | 700 | 200 |
| 88 | 1.5.5.2 | [RFS19] Gerar Relatório Fronteira Eficiente | 1h | 2022-01-18 19:30 A | 2022-01-18 20:30 A | 87 | 100% | 2022-02-03 22:25 | 2022-02-08 21:25 | 3.5h | Leonardo | 1h | 1h | 200 | 700 | 200 |
| 89 | 1.5.5.3 | **Teste** | 0d | 2022-01-13 22:00 A | 2022-01-13 23:30 A |  | 100% | 2022-02-01 20:55 | 2022-02-03 22:25 | 2d |  | 1h | 1h | 200 | 400 | 200 |
| 90 | 1.5.5.3.1 | Testar RFS18 | 0.5h | 2022-01-13 22:00 A | 2022-01-13 22:30 A | 82 | 100% | 2022-02-01 20:55 | 2022-02-03 21:25 | 1h | Ivan | 0.5h | 0.5h | 100 | 200 | 100 |
| 91 | 1.5.5.3.2 | Testar RFS19 | 0.5h | 2022-01-13 23:00 A | 2022-01-13 23:30 A | 90 | 100% | 2022-02-03 21:25 | 2022-02-03 22:25 | 1h | Ivan | 0.5h | 0.5h | 100 | 200 | 100 |
| 92 | 1.5.6 | **Release 06** | 3d | 2022-01-18 19:30 A | 2022-01-22 12:30 A |  | 100% | 2022-02-03 22:25 | 2022-03-08 19:35 | 23d |  | 3h | 3h | 600 | 1,806 | 600 |
| 93 | 1.5.6.1 | [RFS20] Gerar Relatório evolução patrimonial | 1h | 2022-01-18 19:30 A | 2022-01-18 20:30 A | 91 | 100% | 2022-02-03 22:25 | 2022-02-08 21:25 | 3.5h | Lucas | 1h | 1h | 200 | 700 | 200 |
| 94 | 1.5.6.2 | [RFS21] Gerar Relatório de medidas unitárias | 1h | 2022-01-20 22:30 A | 2022-01-20 23:30 A | 93 | 100% | 2022-02-08 21:25 | 2022-02-15 19:55 | 3.5h | Leonardo | 1h | 1h | 200 | 700 | 200 |
| 95 | 1.5.6.3 | **Teste** | 1d | 2022-01-20 22:30 A | 2022-01-22 12:30 A |  | 100% | 2022-02-08 21:25 | 2022-03-08 19:35 | 20d |  | 1h | 1h | 200 | 406 | 200 |
| 96 | 1.5.6.3.1 | Testar RFS20 | 0.5h | 2022-01-20 22:30 A | 2022-01-20 23:00 A | 93 | 100% | 2022-02-08 21:25 | 2022-02-10 21:55 | 1h | Lucas | 0.5h | 0.5h | 100 | 200 | 100 |
| 97 | 1.5.6.3.2 | Testar RFS21 | 0.5h | 2022-01-22 12:00 A | 2022-01-22 12:30 A | 96 | 100% | 2022-02-10 21:55 | 2022-03-08 19:35 | 17.17h | Lucas | 0.5h | 0.5h | 100 | 206 | 100 |

| ID | WBS | Task | Type | Duration | Start | Finish | Predecessors | Complete | Remaining | Baseline start | Baseline finish | Baseline duration | Total slack | Resources | Work | Actual work | Cost | Baseline cost | Actual cost |
| --- | --- | --- | --- | --- | --- | --- | --- | --- | --- | --- | --- | --- | --- | --- | --- | --- | --- | --- | --- |
| 98 | 1.5.7 | **Release 07** |  | 2d | 2022-01-18 19:30 A | 2022-01-20 23:00 A |  | 100% |  | 2022-02-03 22:25 | 2022-03-08 19:35 | 23d |  |  | 1.5h | 1.5h | 300 | 1,806 | 300 |
| 99 | 1.5.7.1 | [RFS22] Recomendar Carteira |  | 1h | 2022-01-18 19:30 A | 2022-01-18 20:30 A | 91 | 100% |  | 2022-02-03 22:25 | 2022-02-08 21:25 | 3.5h |  | Ivan | 1h | 1h | 200 | 700 | 200 |
| 100 | 1.5.7.2 | **Teste** |  | 0d | 2022-01-20 22:30 A | 2022-01-20 23:00 A |  | 100% |  | 2022-02-08 21:25 | 2022-03-08 19:35 | 20d |  |  | 0.5h | 0.5h | 100 | 406 | 100 |
| 101 | 1.5.7.2.1 | Testar RFS22 |  | 0.5h | 2022-01-20 22:30 A | 2022-01-20 23:00 A | 99 | 100% |  | 2022-02-08 21:25 | 2022-02-10 21:55 | 1h |  | Leonardo | 0.5h | 0.5h | 100 | 200 | 100 |
| 102 | 1.6 | **Fechamento** |  | 8d | 2022-01-25 19:00 A | 2022-02-05 12:10 A |  | 100% |  | 2021-09-14 19:00 | 2022-03-15 19:35 | 132d |  |  | 9.31h | 9.31h | 1,862 | 2,062 | 1,862 |
| 103 | 1.6.1 | **Manual/help** |  | 3d | 2022-02-01 19:10 A | 2022-02-05 12:10 A |  | 100% |  | 2022-03-08 19:35 | 2022-03-15 19:35 | 5d |  |  | 5h | 5h | 1,000 | 1,000 | 1,000 |
| 104 | 1.6.1.1 | Fazer manual |  | 4h | 2022-02-01 19:10 A | 2022-02-03 22:40 A | 97 | 100% |  | 2022-03-08 19:35 | 2022-03-10 23:05 | 4h |  | Lucas | 4h | 4h | 800 | 800 | 800 |
| 105 | 1.6.1.2 | Revisão de Manual |  | 1h | 2022-02-03 22:40 A | 2022-02-05 12:10 A | 104 | 100% |  | 2022-03-10 23:05 | 2022-03-15 19:35 | 1h |  | Lucas | 1h | 1h | 200 | 200 | 200 |
| 106 | 1.6.2 | **Teste Final** |  | 5d | 2022-01-25 19:00 A | 2022-02-01 19:18 A |  | 100% |  | 2021-09-14 19:00 | 2022-02-15 20:25 | 112d |  |  | 4.31h | 4.31h | 862 | 1,062 | 862 |
| 107 | 1.6.2.1 | Teste sistemico |  | 2h | 2022-01-25 19:00 A | 2022-01-25 21:00 A | 96, 101 | 100% |  | 2022-02-10 21:55 | 2022-02-15 20:25 | 3h |  | Ivan | 2h | 2h | 400 | 600 | 400 |
| 108 | 1.6.2.2 | Registro De Bugs |  | 1h | 2022-01-27 21:30 A | 2022-01-27 22:30 A | 107 | 100% |  | 2021-09-14 19:00 | 2021-09-14 20:00 | 1h |  | Leonardo | 1h | 1h | 200 | 200 | 200 |
| 109 | 1.6.2.3 | Relatorio de conclusão |  | 1.31h | 2022-01-27 22:30 A | 2022-02-01 19:18 A | 108 | 100% |  | 2021-09-14 20:00 | 2021-09-14 21:18 | 1.31h |  | Leonardo | 1.31h | 1.31h | 262 | 262 | 262 |
| 110 | 1.7 | **Processos** |  | 220d | 2021-09-10 09:00 A | 2022-07-12 19:40 |  | 99% | 0d | 2021-09-10 09:00 | 2021-09-21 19:24 | 8d | 0d |  | 7.13h | 7.13h | 1,427 | 1,758 | 1,427 |
| 111 | 1.7.1 | **Monitoramento e Controle** |  | 220d | 2021-09-10 09:00 A | 2022-07-12 19:40 |  | 99% | 0d | 2021-09-10 09:00 | 2021-09-16 21:52 | 5d | 0d |  | 3.38h | 3.38h | 676 | 676 | 676 |
| 112 | 1.7.1.1 | Acompanhar Projeto |  | 3.38h | 2021-09-14 19:00 A | 2022-07-12 19:40 A | 109 | 100% |  | 2021-09-14 19:00 | 2021-09-16 21:52 | 3.38h |  | Ivan | 3.38h | 3.38h | 676 | 676 | 676 |
| 113 | 1.7.1.2 | Atas das Reuniões | milestone | 0h | 2021-09-10 09:00 A | 2021-09-10 09:00 A |  | 100% |  | 2021-09-10 09:00 | 2021-09-10 09:00 | 0h |  | Ivan |  |  |  |  |  |
| 114 | 1.7.1.3 | Registro de comunicação | milestone | 0h | 2021-09-10 09:00 A | 2021-09-10 09:00 A |  | 100% |  | 2021-09-10 09:00 | 2021-09-10 09:00 | 0h |  | Leonardo [13%] |  |  |  |  |  |
| 115 | 1.7.1.4 | Doc. Aceite | milestone | 0h | 2021-09-10 09:00 | 2021-09-10 09:00 |  |  |  | 2021-09-10 09:00 | 2021-09-10 09:00 | 0h | 220d | Leonardo |  |  |  |  |  |
| 116 | 1.7.1.5 | **Gerência de configuração** |  | 0d | 2021-09-10 09:00 A | 2021-09-10 09:00 A |  | 100% |  | 2021-09-10 09:00 | 2021-09-10 09:00 | 0d |  |  |  |  |  |  |  |
| 117 | 1.7.1.5.1 | Elaborar Branch | milestone | 0h | 2021-09-10 09:00 A | 2021-09-10 09:00 A |  | 100% |  | 2021-09-10 09:00 | 2021-09-10 09:00 | 0h |  | Leonardo [4%] |  |  |  |  |  |
| 118 | 1.7.1.5.2 | Realizar Merge da Branch x para a Trunk | milestone | 0h | 2021-09-10 09:00 A | 2021-09-10 09:00 A |  | 100% |  | 2021-09-10 09:00 | 2021-09-10 09:00 | 0h |  | Leonardo |  |  |  |  |  |
| 119 | 1.7.1.5.3 | Backup_Reserva_Drive | milestone | 0h | 2021-09-10 09:00 A | 2021-09-10 09:00 A |  | 100% |  | 2021-09-10 09:00 | 2021-09-10 09:00 | 0h |  | Leonardo |  |  |  |  |  |
| 120 | 1.7.2 | **Registro de mudança** |  | 107d | 2021-09-14 19:00 A | 2022-02-08 20:52 A |  | 100% |  | 2021-09-14 19:00 | 2021-09-21 19:24 | 5d |  |  | 3.75h | 3.75h | 751 | 1,082 | 751 |
| 121 | 1.7.2.1 | registrar mudança |  | 3.75h | 2021-09-14 19:00 A | 2022-02-08 20:52 A | 102 | 100% |  | 2021-09-14 19:00 | 2021-09-21 19:24 | 5.41h |  | Ivan | 3.75h | 3.75h | 751 | 1,082 | 751 |
