Schedule from MS Project, 2009-11-16 to 2010-03-18, costs in R$, A marks actual dates.
Microsoft

## Calendars

- Padrão: Mon-Fri 09:00-12:00, 13:00-18:00; Sat-Sun off. Exceptions (off unless hours are given): 2009-12-19 09:00-12:00, 13:00-18:00.

## Resources

| Resource | Rate |
| --- | --- |
| Pedro | 80 |
| joão | 80 |
| Cliente |  |
| Paulo | 80 |
| Pedro e Paulo | 80 |
| GP externo |  |
| Rafael | 80 |
| Maria | 80 |
| Ivan | 100 |
| Lucas | 100 |
| Helder | 100 |
| Gerente | 100 |
| Rafael e Pedro |  |
| Todos |  |

## Schedule

| ID | WBS | Task | Type | Duration | Start | Finish | Predecessors | Complete | Remaining | Actual finish | Total slack | Constraint | Resources | Work | Actual work | Cost | Actual cost |
| --- | --- | --- | --- | --- | --- | --- | --- | --- | --- | --- | --- | --- | --- | --- | --- | --- | --- |
| 1 | 1 | **Projeto 01/10 – SGC: Clinica Médica** |  | 90d? | 2009-11-16 A | 2010-03-18 |  | 53% | 42.47d? |  |  |  |  | 864h | 550h | 72,800 | 43,960 |
| 2 | 1.1 | **Prospecção** |  | 4d | 2009-11-16 A | 2009-11-19 A |  | 100% |  |  |  |  |  | 88h | 88h | 6,400 | 6,400 |
| 3 | 1.1.1 | **PTEC** |  | 2d | 2009-11-16 A | 2009-11-17 A |  | 100% |  |  |  |  | Pedro e Paulo | 40h | 40h | 3,200 | 3,200 |
| 4 | 1.1.1.1 | Estudar dominio de aplicação |  | 1d | 2009-11-16 A | 2009-11-16 A |  | 100% |  |  |  |  | Pedro | 8h | 8h | 640 | 640 |
| 5 | 1.1.1.2 | Reuninir com o cliente | milestone | 0d | 2009-11-16 A | 2009-11-16 A |  | 100% |  |  |  |  | Pedro |  |  |  |  |
| 6 | 1.1.1.3 | Redigir PTEC |  | 1d | 2009-11-16 A | 2009-11-16 A | 5 | 100% |  |  |  |  | Pedro | 8h | 8h | 640 | 640 |
| 7 | 1.1.1.4 | Revisar PTEC |  | 1d | 2009-11-16 A | 2009-11-16 A |  | 100% |  |  |  |  | Paulo | 8h | 8h | 640 | 640 |
| 8 | 1.1.1.5 | Aprovar PTEC | milestone | 0d | 2009-11-17 A | 2009-11-17 A | 6 | 100% |  |  |  |  | Cliente |  |  |  |  |
| 9 | 1.1.2 | **Estimativa preliminar de Tamanho** |  | 1d | 2009-11-17 A | 2009-11-17 A | 8 | 100% |  |  |  |  | Pedro e Paulo | 24h | 24h | 1,280 | 1,280 |
| 10 | 1.1.2.1 | Realizar Estimativa Prel. Tam |  | 1d | 2009-11-17 A | 2009-11-17 A | 8 | 100% |  |  |  |  | Pedro e Paulo | 8h | 8h | 640 | 640 |
| 11 | 1.1.2.2 | Revisar Estimativa Prel. Tam |  | 1d | 2009-11-17 A | 2009-11-17 A | 8 | 100% |  |  |  |  | GP externo | 8h | 8h |  |  |
| 12 | 1.1.3 | **Cronograma/ Orçamento Preliminar** |  | 1d | 2009-11-18 A | 2009-11-18 | 9 | 100% |  | 2009-11-19 |  |  | Pedro e Paulo | 24h | 24h | 1,920 | 1,920 |
| 13 | 1.1.3.1 | Elaborar Cronograma/ Orçamento Preliminar |  | 1d | 2009-11-18 A | 2009-11-18 A | 9 | 100% |  |  |  |  | Paulo | 8h | 8h | 640 | 640 |
| 14 | 1.1.3.2 | Realizar estimativas de orçamento e cronograma Prel. |  | 1d | 2009-11-19 A | 2009-11-19 A | 13 | 100% |  |  |  |  | Pedro | 8h | 8h | 640 | 640 |
| 15 | 1.2 | **Analise** |  | 14d | 2009-11-24 A | 2009-12-11 | 14 | 33% | 9.33d |  |  |  |  | 232h | 144h | 13,440 | 7,040 |
| 16 | 1.2.1 | **Documentos de Requisitos** |  | 7d | 2009-11-24 A | 2009-12-02 | 14 | 43% | 4d |  |  |  | Rafael e Pedro | 112h | 80h | 3,840 | 1,920 |
| 17 | 1.2.1.1 | Reuninir com o cliente |  | 1d | 2009-11-24 A | 2009-11-24 A | 14 | 100% |  |  |  |  | Rafael | 8h | 8h | 640 | 640 |
| 18 | 1.2.1.2 | Elaborar DRE |  | 1d | 2009-11-25 A | 2009-11-25 A | 17 | 100% |  |  |  | finish no earlier than 2009-11-25 | Rafael | 8h | 8h | 640 | 640 |
| 19 | 1.2.1.3 | Revisar DRE |  | 4d | 2009-11-26 A | 2009-12-01 | 18 | 25% | 3d |  | 0d |  | Pedro | 32h | 8h | 2,560 | 640 |
| 20 | 1.2.1.4 | Submeter DRE para aprovação do cliente |  | 1d | 2009-12-01 A | 2009-12-02 | 19 |  | 1d |  | 0d | finish no earlier than 2009-12-02 | Cliente | 8h |  |  |  |
| 21 | 1.2.2 | **Matriz RB** |  | 7d | 2009-12-02 A | 2009-12-10 | 20 | 25% | 5.25d |  |  |  | Paulo | 120h | 64h | 9,600 | 5,120 |
| 22 | 1.2.2.1 | Elaborar MRB | manual | 4d | 2009-12-02 A | 2009-12-07 | 20 | 25% | 3d |  |  |  | Paulo | 32h | 8h | 2,560 | 640 |
| 23 | 1.2.2.2 | Revisar MRB | manual | 4d | 2009-12-07 A | 2009-12-10 | 22 | 25% | 3d |  |  |  | Pedro | 32h | 8h | 2,560 | 640 |
| 24 | 1.3 | **Projeto** |  | 4d | 2009-12-11 A | 2009-12-16 | 23 | 73% | 1.09d |  |  |  |  | 72h | 64h | 5,760 | 5,120 |
| 25 | 1.3.1 | **Diagrama de classe** |  | 2d | 2009-12-11 A | 2009-12-14 | 23 | 100% |  | 2009-12-11 |  |  |  | 16h | 16h | 1,280 | 1,280 |
| 26 | 1.3.1.1 | Elaborar diagrama de classe | manual | 1d | 2009-12-11 A | 2009-12-11 A | 23 | 100% |  |  |  |  | Maria | 8h | 8h | 640 | 640 |
| 27 | 1.3.1.2 | Revisar diagrama de classe | manual | 1d | 2009-12-11 A | 2009-12-11 A | 26 | 100% |  |  |  |  | Paulo | 8h | 8h | 640 | 640 |

| ID | WBS | Task | Type | Duration | Start | Finish | Predecessors | Complete | Remaining | Total slack | Free slack | Constraint | Resources | Work | Actual work | Cost | Actual cost |
| --- | --- | --- | --- | --- | --- | --- | --- | --- | --- | --- | --- | --- | --- | --- | --- | --- | --- |
| 28 | 1.3.2 | **Diagrama de contexto** |  | 1d | 2009-12-12 A | 2009-12-12 A | 27 | 100% |  |  |  |  |  | 16h | 16h | 1,280 | 1,280 |
| 29 | 1.3.2.1 | Elaborar diagrama de contexto | manual | 1d | 2009-12-12 A | 2009-12-12 A | 27 | 100% |  |  |  |  | Pedro | 8h | 8h | 640 | 640 |
| 30 | 1.3.2.2 | Revisar diagrama de contexto | manual | 1d | 2009-12-12 A | 2009-12-12 A | 29 | 100% |  |  |  |  | Rafael | 8h | 8h | 640 | 640 |
| 31 | 1.3.3 | **Dicionario de Dados** |  | 1d | 2009-12-14 A | 2009-12-14 A | 30 | 100% |  |  |  |  |  | 16h | 16h | 1,280 | 1,280 |
| 32 | 1.3.3.1 | Criar Dicionarios | manual | 1d | 2009-12-14 A | 2009-12-14 A | 30 | 100% |  |  |  |  | Maria | 8h | 8h | 640 | 640 |
| 33 | 1.3.3.2 | Revisar Dicionário | manual | 1d | 2009-12-14 A | 2009-12-14 A | 32 | 100% |  |  |  |  | Pedro | 8h | 8h | 640 | 640 |
| 34 | 1.3.4 | Atualizar MRB | manual | 1d | 2009-12-14 A | 2009-12-14 A | 33 | 100% |  |  |  |  | Paulo | 8h | 8h | 640 | 640 |
| 35 | 1.3.5 | **Modelo Entidade Relacionamento** |  | 2d | 2009-12-15 A | 2009-12-16 | 34 | 25% | 1.5d |  |  |  |  | 16h | 8h | 1,280 | 640 |
| 36 | 1.3.5.1 | Elaborar MER | manual | 2d | 2009-12-15 A | 2009-12-16 | 34 | 50% | 1d |  |  |  | Rafael | 16h | 8h | 1,280 | 640 |
| 37 | 1.3.5.2 | Revisar MER | manual | 2d | 2009-12-15 | 2009-12-16 | 36 |  |  |  |  |  |  |  |  |  |  |
| 38 | 1.4 | **Imprementação** |  | 52d | 2009-12-17 A | 2010-02-25 | 37 | 54% | 24.02d |  |  |  |  | 464h | 254h | 46,400 | 25,400 |
| 39 | 1.4.1 | **Release 01** |  | 5d | 2009-12-17 A | 2009-12-22 |  | 8% | 4.62d |  |  |  |  | 40h | 3h | 4,000 | 300 |
| 40 | 1.4.1.1 | **Implementar RFC001** |  | 2d | 2009-12-17 A | 2009-12-18 |  | 19% | 1.62d |  |  |  |  | 16h | 3h | 1,600 | 300 |
| 41 | 1.4.1.1.1 | Imprementar RFS 001 |  | 1d | 2009-12-17 A | 2009-12-17 |  | 19% | 0.81d | 4d |  |  | Ivan | 8h | 1.5h | 800 | 150 |
| 42 | 1.4.1.1.2 | Imprementar RFS 002 |  | 1d | 2009-12-18 A | 2009-12-18 |  | 19% | 0.81d | 3d |  |  | Ivan | 8h | 1.5h | 800 | 150 |
| 43 | 1.4.1.1.3 | Imprementar RFS 003 | milestone | 0d | 2009-12-18 A | 2009-12-18 A |  | 100% |  |  |  |  | Ivan |  |  |  |  |
| 44 | 1.4.1.2 | **Implementar RFC002** |  | 3d | 2009-12-19 | 2009-12-22 | 40 |  |  |  |  |  |  | 24h |  | 2,400 |  |
| 45 | 1.4.1.2.1 | Imprementar RFS 004 |  | 1d | 2009-12-19 | 2009-12-19 |  |  |  | 63d | 0d | finish no earlier than 2009-12-19 | Helder | 8h |  | 800 |  |
| 46 | 1.4.1.2.2 | Imprementar RFS 005 |  | 1d | 2009-12-21 | 2009-12-21 | 45 |  |  | 63d |  | finish no earlier than 2009-12-21 | Helder | 8h |  | 800 |  |
| 47 | 1.4.1.2.3 | Imprementar RFS 006 | milestone | 0d | 2009-12-21 | 2009-12-21 |  |  |  | 2d | 0d | start no earlier than 2009-12-21 | Helder |  |  |  |  |
| 48 | 1.4.1.2.4 | Imprementar RFS 007 |  | 1d | 2009-12-21 | 2009-12-21 | 47 |  |  | 2d |  |  | Helder | 8h |  | 800 |  |
| 49 | 1.4.1.3 | **Teste** |  | 0d | 2009-12-22 | 2009-12-22 | 44 |  |  |  |  |  |  |  |  |  |  |
| 50 | 1.4.1.3.1 | Teste RFC 001 | milestone | 0d | 2009-12-22 | 2009-12-22 |  |  |  | 2d |  |  | Lucas |  |  |  |  |
| 51 | 1.4.1.3.2 | Teste RFC 002 | milestone | 0d | 2009-12-22 | 2009-12-22 |  |  |  | 2d |  |  | Lucas |  |  |  |  |

| ID | WBS | Task | Type | Duration | Start | Finish | Predecessors | Total slack | Free slack | Constraint | Resources | Work | Cost |
| --- | --- | --- | --- | --- | --- | --- | --- | --- | --- | --- | --- | --- | --- |
| 52 | 1.4.2 | **Release 02** |  | 4d | 2009-12-23 | 2009-12-28 | 49 |  |  |  |  | 32h | 3,200 |
| 53 | 1.4.2.1 | **Implementar RFC003** |  | 1d | 2009-12-23 | 2009-12-23 | 40 | 1d | 0d |  |  | 16h | 1,600 |
| 54 | 1.4.2.1.1 | Imprementar RFS 008 |  | 1d | 2009-12-23 | 2009-12-23 |  | 1d |  |  | Lucas | 8h | 800 |
| 55 | 1.4.2.1.2 | Imprementar RFS 009 | milestone | 0d | 2009-12-23 | 2009-12-23 |  | 2d |  |  | Lucas |  |  |
| 56 | 1.4.2.1.3 | Imprementar RFS 010 | milestone | 0d | 2009-12-23 | 2009-12-23 |  | 2d |  |  | Lucas |  |  |
| 57 | 1.4.2.1.4 | Imprementar RFS 011 |  | 1d | 2009-12-23 | 2009-12-23 |  | 1d |  |  | Lucas | 8h | 800 |
| 58 | 1.4.2.2 | **Implementar RFC004** |  | 1d | 2009-12-24 | 2009-12-24 | 53 |  |  |  |  | 8h | 800 |
| 59 | 1.4.2.2.1 | Imprementar RFS 012 |  | 1d | 2009-12-24 | 2009-12-24 |  | 1d |  |  | Helder | 8h | 800 |
| 60 | 1.4.2.2.2 | Imprementar RFS 013 | milestone | 0d | 2009-12-24 | 2009-12-24 |  | 2d |  |  | Helder |  |  |
| 61 | 1.4.2.2.3 | Imprementar RFS 014 | milestone | 0d | 2009-12-24 | 2009-12-24 |  | 2d |  |  | Helder |  |  |
| 62 | 1.4.2.3 | **Teste** |  | 1d | 2009-12-25 | 2009-12-25 | 58 |  |  |  |  | 8h | 800 |
| 63 | 1.4.2.3.1 | Teste RFC 003 |  | 1d | 2009-12-25 | 2009-12-25 |  | 1d |  |  | Ivan | 8h | 800 |
| 64 | 1.4.2.3.2 | Teste RFC 004 | milestone | 0d | 2009-12-25 | 2009-12-25 |  | 2d |  |  | Ivan |  |  |
| 65 | 1.4.3 | **Release 03** |  | 5d | 2009-12-29 | 2010-01-04 | 62 |  |  |  |  | 32h | 3,200 |
| 66 | 1.4.3.1 | **Implementar RFC005** |  | 1d | 2009-12-29 | 2009-12-29 | 62 |  |  |  |  | 8h | 800 |
| 67 | 1.4.3.1.1 | Imprementar RFS 015 |  | 1d | 2009-12-29 | 2009-12-29 |  | 57d |  | finish no earlier than 2009-12-29 | Lucas | 8h | 800 |
| 68 | 1.4.3.1.2 | Imprementar RFS 016 | milestone | 0d | 2009-12-29 | 2009-12-29 |  | 58d |  | start no earlier than 2009-12-29 | Lucas |  |  |
| 69 | 1.4.3.1.3 | Imprementar RFS 017 | milestone | 0d | 2009-12-29 | 2009-12-29 |  | 58d |  | start no earlier than 2009-12-29 | Lucas |  |  |
| 70 | 1.4.3.2 | **Implementar RFC006** |  | 3d | 2009-12-30 | 2010-01-01 | 66 |  |  |  |  | 16h | 1,600 |
| 71 | 1.4.3.2.1 | Imprementar RFS 018 |  | 1d | 2009-12-30 | 2009-12-30 |  | 2d |  |  | Ivan | 8h | 800 |
| 72 | 1.4.3.2.2 | Imprementar RFS 019 |  | 1d | 2010-01-01 | 2010-01-01 |  | 54d |  | start no earlier than 2010-01-01 | Ivan | 8h | 800 |
| 73 | 1.4.3.2.3 | Imprementar RFS 020 | milestone | 0d | 2010-01-01 | 2010-01-01 |  | 55d |  | start no earlier than 2010-01-01 | Ivan |  |  |
| 74 | 1.4.3.3 | **Teste** |  | 1d | 2010-01-04 | 2010-01-04 | 70 |  |  |  |  | 8h | 800 |
| 75 | 1.4.3.3.1 | Teste RFC 005 |  | 1d | 2010-01-04 | 2010-01-04 |  | 0d |  |  | Helder | 8h | 800 |
| 76 | 1.4.3.3.2 | Teste RFC 006 | milestone | 0d | 2010-01-04 | 2010-01-04 |  | 1d |  |  | Helder |  |  |

| ID | WBS | Task | Type | Duration | Start | Finish | Predecessors | Complete | Remaining | Actual finish | Total slack | Free slack | Constraint | Resources | Work | Actual work | Cost | Actual cost |
| --- | --- | --- | --- | --- | --- | --- | --- | --- | --- | --- | --- | --- | --- | --- | --- | --- | --- | --- |
| 77 | 1.4.4 | **Release 04** |  | 5d | 2010-01-05 A | 2010-01-11 | 74 | 20% | 4d |  |  |  |  |  | 40h | 8h | 4,000 | 800 |
| 78 | 1.4.4.1 | **Implementar RFC005** |  | 2d | 2010-01-05 | 2010-01-06 | 74 |  |  |  |  |  |  |  | 16h |  | 1,600 |  |
| 79 | 1.4.4.1.1 | Imprementar RFS 015 |  | 1d | 2010-01-05 | 2010-01-05 |  |  |  |  | 34d | 0d | finish no earlier than 2010-01-05 | Ivan | 8h |  | 800 |  |
| 80 | 1.4.4.1.2 | Imprementar RFS 016 |  | 1d | 2010-01-06 | 2010-01-06 | 79 |  |  |  | 34d |  |  | Ivan | 8h |  | 800 |  |
| 81 | 1.4.4.1.3 | Imprementar RFS 017 | milestone | 0d | 2010-01-06 | 2010-01-06 |  |  |  |  | 52d |  | start no earlier than 2010-01-06 | Ivan |  |  |  |  |
| 82 | 1.4.4.2 | **Implementar RFC006** |  | 2d | 2010-01-07 | 2010-01-08 | 78 |  |  |  |  |  |  |  | 16h |  | 1,600 |  |
| 83 | 1.4.4.2.1 | Imprementar RFS 018 |  | 1d | 2010-01-07 | 2010-01-07 |  |  |  |  | 34d | 0d |  | Helder | 8h |  | 800 |  |
| 84 | 1.4.4.2.2 | Imprementar RFS 019 |  | 1d | 2010-01-08 | 2010-01-08 | 83 |  |  |  | 34d |  |  | Helder | 8h |  | 800 |  |
| 85 | 1.4.4.2.3 | Imprementar RFS 020 | milestone | 0d | 2010-01-08 | 2010-01-08 |  |  |  |  | 50d |  | start no earlier than 2010-01-08 | Helder |  |  |  |  |
| 86 | 1.4.4.3 | **Teste** |  | 1d | 2010-01-11 A | 2010-01-11 A | 82 | 100% |  |  |  |  |  |  | 8h | 8h | 800 | 800 |
| 87 | 1.4.4.3.1 | Teste RFC 005 | manual | 1d | 2010-01-11 A | 2010-01-11 A |  | 100% |  |  |  |  |  | Lucas | 8h | 8h | 800 | 800 |
| 88 | 1.4.4.3.2 | Teste RFC 006 | milestone, manual | 0d | 2010-01-11 A | 2010-01-11 A |  | 100% |  |  |  |  |  | Lucas |  |  |  |  |
| 89 | 1.4.5 | **Release 05** |  | 5d | 2010-01-12 A | 2010-01-18 | 86 | 68% | 1.62d |  |  |  |  |  | 40h | 27h | 4,000 | 2,700 |
| 90 | 1.4.5.1 | **Implementar RFC007** |  | 2d | 2010-01-12 A | 2010-01-13 | 86 | 19% | 1.62d |  |  |  |  |  | 16h | 3h | 1,600 | 300 |
| 91 | 1.4.5.1.1 | Imprementar RFS 021 |  | 1d | 2010-01-12 A | 2010-01-12 |  | 19% | 0.81d |  | 32d |  |  | Helder | 8h | 1.5h | 800 | 150 |
| 92 | 1.4.5.1.2 | Imprementar RFS 022 |  | 1d | 2010-01-13 A | 2010-01-13 |  | 19% | 0.81d |  | 31d |  |  | Helder | 8h | 1.5h | 800 | 150 |
| 93 | 1.4.5.1.3 | Imprementar RFS 023 | milestone | 0d | 2010-01-13 A | 2010-01-13 A |  | 100% |  |  |  |  |  | Helder |  |  |  |  |
| 94 | 1.4.5.2 | **Implementar RFC008** |  | 2d | 2010-01-14 A | 2010-01-15 A | 90 | 100% |  |  |  |  |  |  | 16h | 16h | 1,600 | 1,600 |
| 95 | 1.4.5.2.1 | Imprementar RFS 024 |  | 1d | 2010-01-14 A | 2010-01-14 A |  | 100% |  |  |  |  |  | Lucas | 8h | 8h | 800 | 800 |
| 96 | 1.4.5.2.2 | Imprementar RFS 025 |  | 1d | 2010-01-15 A | 2010-01-15 A |  | 100% |  |  |  |  |  | Lucas | 8h | 8h | 800 | 800 |
| 97 | 1.4.5.2.3 | Imprementar RFS 026 | milestone | 0d | 2010-01-15 A | 2010-01-15 A |  | 100% |  |  |  |  |  | Lucas |  |  |  |  |
| 98 | 1.4.5.3 | **Teste** |  | 1d | 2010-01-16 A | 2010-01-16 | 94 | 100% |  | 2010-01-18 |  |  |  |  | 8h | 8h | 800 | 800 |
| 99 | 1.4.5.3.1 | Teste RFC 007 |  | 1d | 2010-01-16 A | 2010-01-18 A |  | 100% |  |  |  |  |  | Ivan | 8h | 8h | 800 | 800 |
| 100 | 1.4.5.3.2 | Teste RFC 008 | milestone | 0d | 2010-01-18 A | 2010-01-18 A |  | 100% |  |  |  |  |  | Ivan |  |  |  |  |

| ID | WBS | Task | Type | Duration | Start | Finish | Predecessors | Complete | Remaining | Resources | Work | Actual work | Cost | Actual cost |
| --- | --- | --- | --- | --- | --- | --- | --- | --- | --- | --- | --- | --- | --- | --- |
| 101 | 1.4.6 | **Release 06** |  | 7d | 2010-01-19 A | 2010-01-27 A | 98 | 100% |  |  | 56h | 56h | 5,600 | 5,600 |
| 102 | 1.4.6.1 | **Implementar RFC009** |  | 3d | 2010-01-19 A | 2010-01-21 A | 98 | 100% |  |  | 24h | 24h | 2,400 | 2,400 |
| 103 | 1.4.6.1.1 | Imprementar RFS 027 | manual | 1d | 2010-01-19 A | 2010-01-19 A |  | 100% |  | Helder | 8h | 8h | 800 | 800 |
| 104 | 1.4.6.1.2 | Imprementar RFS 028 | manual | 1d | 2010-01-20 A | 2010-01-20 A |  | 100% |  | Helder | 8h | 8h | 800 | 800 |
| 105 | 1.4.6.1.3 | Imprementar RFS 029 | manual | 1d | 2010-01-21 A | 2010-01-21 A |  | 100% |  | Helder | 8h | 8h | 800 | 800 |
| 106 | 1.4.6.1.4 | Imprementar RFS 030 | milestone, manual | 0d | 2010-01-21 A | 2010-01-21 A |  | 100% |  | Helder |  |  |  |  |
| 107 | 1.4.6.2 | **Implementar RFC010** |  | 3d | 2010-01-22 A | 2010-01-26 A | 102 | 100% |  |  | 24h | 24h | 2,400 | 2,400 |
| 108 | 1.4.6.2.1 | Imprementar RFS 031 | manual | 1d | 2010-01-22 A | 2010-01-22 A |  | 100% |  | Ivan | 8h | 8h | 800 | 800 |
| 109 | 1.4.6.2.2 | Imprementar RFS 032 | manual | 1d | 2010-01-25 A | 2010-01-25 A |  | 100% |  | Ivan | 8h | 8h | 800 | 800 |
| 110 | 1.4.6.2.3 | Imprementar RFS 033 | manual | 1d | 2010-01-26 A | 2010-01-26 A |  | 100% |  | Ivan | 8h | 8h | 800 | 800 |
| 111 | 1.4.6.2.4 | Imprementar RFS 034 | milestone, manual | 0d | 2010-01-26 A | 2010-01-26 A |  | 100% |  | Ivan |  |  |  |  |
| 112 | 1.4.6.3 | **Teste** |  | 1d | 2010-01-27 A | 2010-01-27 A | 107 | 100% |  |  | 8h | 8h | 800 | 800 |
| 113 | 1.4.6.3.1 | Teste RFC 009 | manual | 1d | 2010-01-27 A | 2010-01-27 A |  | 100% |  | Lucas | 8h | 8h | 800 | 800 |
| 114 | 1.4.6.3.2 | Teste RFC 010 | milestone, manual | 0d | 2010-01-27 A | 2010-01-27 A |  | 100% |  | Lucas |  |  |  |  |
| 115 | 1.4.7 | **Release 07** |  | 6d | 2010-01-28 A | 2010-02-04 | 112 | 60% | 2.4d |  | 80h | 48h | 8,000 | 4,800 |
| 116 | 1.4.7.1 | **Implementar RFC011** |  | 1d | 2010-01-28 A | 2010-01-28 A | 112 | 100% |  |  | 8h | 8h | 800 | 800 |
| 117 | 1.4.7.1.1 | Imprementar RFS 035 | manual | 1d | 2010-01-28 A | 2010-01-28 A |  | 100% |  | Helder | 8h | 8h | 800 | 800 |
| 118 | 1.4.7.2 | **Implementar RFC012** |  | 1d | 2010-01-29 A | 2010-01-29 A | 116 | 100% |  |  | 8h | 8h | 800 | 800 |
| 119 | 1.4.7.2.1 | Imprementar RFS 036 | manual | 1d | 2010-01-29 A | 2010-01-29 A |  | 100% |  | Lucas | 8h | 8h | 800 | 800 |
| 120 | 1.4.7.3 | **Implementar RFC013** |  | 1d | 2010-02-01 A | 2010-02-01 A | 118 | 100% |  |  | 8h | 8h | 800 | 800 |
| 121 | 1.4.7.3.1 | Imprementar RFS 037 | manual | 1d | 2010-02-01 A | 2010-02-01 A |  | 100% |  | Ivan | 8h | 8h | 800 | 800 |
| 122 | 1.4.7.4 | **Implementar RFC014** |  | 1d | 2010-02-02 A | 2010-02-02 A | 120 | 100% |  |  | 8h | 8h | 800 | 800 |
| 123 | 1.4.7.4.1 | Imprementar RFS 038 | manual | 1d | 2010-02-02 A | 2010-02-02 A |  | 100% |  | Helder | 8h | 8h | 800 | 800 |
| 124 | 1.4.7.5 | **Implementar RFC015** |  | 1d | 2010-02-03 A | 2010-02-03 A | 122 | 100% |  |  | 8h | 8h | 800 | 800 |
| 125 | 1.4.7.5.1 | Imprementar RFS 039 | manual | 1d | 2010-02-03 A | 2010-02-03 A |  | 100% |  | Lucas | 8h | 8h | 800 | 800 |

| ID | WBS | Task | Type | Duration | Start | Finish | Predecessors | Complete | Remaining | Resources | Work | Actual work | Cost | Actual cost |
| --- | --- | --- | --- | --- | --- | --- | --- | --- | --- | --- | --- | --- | --- | --- |
| 126 | 1.4.7.6 | **Teste** |  | 1d | 2010-02-04 A | 2010-02-04 | 124 | 20% | 0.8d |  | 40h | 8h | 4,000 | 800 |
| 127 | 1.4.7.6.1 | Teste RFC 011 | manual | 1d | 2010-02-04 A | 2010-02-04 A |  | 100% |  | Lucas | 8h | 8h | 800 | 800 |
| 128 | 1.4.7.6.2 | Teste RFC 012 | manual | 1d | 2010-02-04 A | 2010-02-04 |  |  | 1d | Ivan | 8h |  | 800 |  |
| 129 | 1.4.7.6.3 | Teste RFC 013 | manual | 1d | 2010-02-04 A | 2010-02-04 |  |  | 1d | Helder | 8h |  | 800 |  |
| 130 | 1.4.7.6.4 | Teste RFC 014 | manual | 1d | 2010-02-04 A | 2010-02-04 |  |  | 1d | Lucas | 8h |  | 800 |  |
| 131 | 1.4.7.6.5 | Teste RFC 015 | manual | 1d | 2010-02-04 A | 2010-02-04 |  |  | 1d | Ivan | 8h |  | 800 |  |
| 132 | 1.4.8 | **Release 08** |  | 5d | 2010-02-05 A | 2010-02-11 | 126 | 56% | 2.22d |  | 64h | 40h | 6,400 | 4,000 |
| 133 | 1.4.8.1 | **Implementar RFC016** |  | 1d | 2010-02-05 A | 2010-02-05 A | 126 | 100% |  |  | 8h | 8h | 800 | 800 |
| 134 | 1.4.8.1.1 | Imprementar RFS 040 | manual | 1d | 2010-02-05 A | 2010-02-05 A |  | 100% |  | Lucas | 8h | 8h | 800 | 800 |
| 135 | 1.4.8.2 | **Implementar RFC017** |  | 1d | 2010-02-08 A | 2010-02-08 A | 133 | 100% |  |  | 8h | 8h | 800 | 800 |
| 136 | 1.4.8.2.1 | Imprementar RFS 041 | manual | 1d | 2010-02-08 A | 2010-02-08 A |  | 100% |  | Helder | 8h | 8h | 800 | 800 |
| 137 | 1.4.8.3 | **Implementar RFC018** |  | 2d | 2010-02-09 A | 2010-02-10 | 135 | 50% | 1d |  | 32h | 16h | 3,200 | 1,600 |
| 138 | 1.4.8.3.1 | Imprementar RFS 042 | manual | 1d | 2010-02-09 A | 2010-02-09 A |  | 100% |  | Ivan | 8h | 8h | 800 | 800 |
| 139 | 1.4.8.3.2 | Imprementar RFS 043 | manual | 1d | 2010-02-10 A | 2010-02-10 A |  | 100% |  | Ivan | 8h | 8h | 800 | 800 |
| 140 | 1.4.8.3.3 | Imprementar RFS 044 | manual | 1d | 2010-02-10 A | 2010-02-10 |  |  | 1d | Ivan | 8h |  | 800 |  |
| 141 | 1.4.8.3.4 | Imprementar RFS 045 | manual | 1d | 2010-02-10 A | 2010-02-10 |  |  | 1d | Ivan | 8h |  | 800 |  |
| 142 | 1.4.8.4 | **Teste** |  | 1d | 2010-02-11 A | 2010-02-11 | 137 | 33% | 0.67d |  | 16h | 8h | 1,600 | 800 |
| 143 | 1.4.8.4.1 | Teste RFC 016 | manual | 1d | 2010-02-11 A | 2010-02-11 A |  | 100% |  | Helder | 8h | 8h | 800 | 800 |
| 144 | 1.4.8.4.2 | Teste RFC 017 | manual | 1d | 2010-02-11 A | 2010-02-11 |  |  | 1d | Lucas | 8h |  | 800 |  |
| 145 | 1.4.8.4.3 | Teste RFC 018 | manual | 1d | 2010-02-11 A | 2010-02-11 |  |  | 1d |  |  |  |  |  |
| 146 | 1.4.9 | **Release 09** |  | 5d | 2010-02-12 A | 2010-02-18 | 142 | 80% | 1d |  | 40h | 32h | 4,000 | 3,200 |
| 147 | 1.4.9.1 | **Implementar RFC019** |  | 3d | 2010-02-12 A | 2010-02-16 | 142 | 67% | 1d |  | 24h | 16h | 2,400 | 1,600 |
| 148 | 1.4.9.1.1 | Imprementar RFS 046 | manual | 1d | 2010-02-12 A | 2010-02-12 A |  | 100% |  | Lucas | 8h | 8h | 800 | 800 |
| 149 | 1.4.9.1.2 | Imprementar RFS 047 | manual | 1d | 2010-02-15 A | 2010-02-15 A |  | 100% |  | Lucas | 8h | 8h | 800 | 800 |
| 150 | 1.4.9.1.3 | Imprementar RFS 048 | manual | 1d | 2010-02-16 A | 2010-02-16 |  |  | 1d | Lucas | 8h |  | 800 |  |
| 151 | 1.4.9.1.4 | Imprementar RFS 049 | milestone, manual | 0d | 2010-02-16 A | 2010-02-16 A |  | 100% |  | Lucas |  |  |  |  |

| ID | WBS | Task | Type | Duration | Start | Finish | Predecessors | Complete | Resources | Work | Actual work | Cost | Actual cost |
| --- | --- | --- | --- | --- | --- | --- | --- | --- | --- | --- | --- | --- | --- |
| 152 | 1.4.9.2 | **Implementar RFC020** |  | 1d | 2010-02-17 A | 2010-02-17 A | 147 | 100% |  | 8h | 8h | 800 | 800 |
| 153 | 1.4.9.2.1 | Imprementar RFS 050 | manual | 1d | 2010-02-17 A | 2010-02-17 A |  | 100% | Ivan | 8h | 8h | 800 | 800 |
| 154 | 1.4.9.3 | **Teste** |  | 1d | 2010-02-18 A | 2010-02-18 A | 152 | 100% |  | 8h | 8h | 800 | 800 |
| 155 | 1.4.9.3.1 | Teste RFC 019 | manual | 1d | 2010-02-18 A | 2010-02-18 A |  | 100% | Ivan | 8h | 8h | 800 | 800 |
| 156 | 1.4.9.3.2 | Teste RFC 020 | milestone, manual | 0d | 2010-02-18 A | 2010-02-18 A |  | 100% | Helder |  |  |  |  |
| 157 | 1.4.10 | **Release 10** |  | 5d | 2010-02-19 A | 2010-02-25 A | 154 | 100% |  | 40h | 40h | 4,000 | 4,000 |
| 158 | 1.4.10.1 | **Implementar RFC021** |  | 2d | 2010-02-19 A | 2010-02-22 A | 154 | 100% |  | 16h | 16h | 1,600 | 1,600 |
| 159 | 1.4.10.1.1 | Imprementar RFS 051 |  | 1d | 2010-02-19 A | 2010-02-19 A |  | 100% | Ivan | 8h | 8h | 800 | 800 |
| 160 | 1.4.10.1.2 | Imprementar RFS 052 |  | 1d | 2010-02-22 A | 2010-02-22 A |  | 100% | Ivan | 8h | 8h | 800 | 800 |
| 161 | 1.4.10.1.3 | Imprementar RFS 053 | milestone | 0d | 2010-02-22 A | 2010-02-22 A |  | 100% | Ivan |  |  |  |  |
| 162 | 1.4.10.1.4 | Imprementar RFS 054 | milestone | 0d | 2010-02-22 A | 2010-02-22 A |  | 100% | Ivan |  |  |  |  |
| 163 | 1.4.10.2 | **Implementar RFC022** |  | 1d | 2010-02-23 A | 2010-02-23 A | 158 | 100% |  | 8h | 8h | 800 | 800 |
| 164 | 1.4.10.2.1 | Imprementar RFS 055 |  | 1d | 2010-02-23 A | 2010-02-23 A |  | 100% | Lucas | 8h | 8h | 800 | 800 |
| 165 | 1.4.10.3 | **Implementar RFC023** |  | 2d | 2010-02-24 A | 2010-02-25 A | 163 | 100% |  | 16h | 16h | 1,600 | 1,600 |
| 166 | 1.4.10.3.1 | Imprementar RFS 056 |  | 1d | 2010-02-24 A | 2010-02-24 A |  | 100% | Helder | 8h | 8h | 800 | 800 |
| 167 | 1.4.10.3.2 | Imprementar RFS 057 |  | 1d | 2010-02-25 A | 2010-02-25 A |  | 100% | Helder | 8h | 8h | 800 | 800 |
| 168 | 1.4.10.3.3 | Imprementar RFS 058 | milestone | 0d | 2010-02-25 A | 2010-02-25 A |  | 100% | Helder |  |  |  |  |
| 169 | 1.4.10.3.4 | Imprementar RFS 059 | milestone | 0d | 2010-02-25 A | 2010-02-25 A |  | 100% | Helder |  |  |  |  |
| 170 | 1.4.10.4 | **Teste** |  | 0d | 2010-02-25 A | 2010-02-25 A | 165 | 100% |  |  |  |  |  |
| 171 | 1.4.10.4.1 | Teste RFC 021 | milestone | 0d | 2010-02-25 A | 2010-02-25 A |  | 100% | Lucas |  |  |  |  |
| 172 | 1.4.10.4.2 | Teste RFC 022 | milestone | 0d | 2010-02-25 A | 2010-02-25 A |  | 100% | Ivan |  |  |  |  |
| 173 | 1.4.10.4.3 | Teste RFC 023 | milestone | 0d | 2010-02-25 A | 2010-02-25 A |  | 100% | Lucas |  |  |  |  |
| 174 | 1.5 | **Monitoramento e Controle** |  | 2d? | 2010-02-26 | 2010-03-01 | 38 |  |  | 8h |  | 800 |  |
| 175 | 1.5.1 | Acompanhar Projeto | manual | 1d | 2010-02-26 | 2010-02-26 |  |  |  |  |  |  |  |

| ID | WBS | Task | Type | Duration | Start | Finish | Resources | Work | Cost |
| --- | --- | --- | --- | --- | --- | --- | --- | --- | --- |
| 176 | 1.5.2 | **Gerência de configuração** |  | 1d? | 2010-03-01 | 2010-03-01 | Gerente | 8h | 800 |
| 177 | 1.5.2.1 | Elaborar Branch | milestone, manual | 0d | 2010-03-01 | 2010-03-01 |  |  |  |
| 178 | 1.5.2.2 | Realizar Merge da Branch x para a Trunk | milestone, manual | 0d | 2010-03-01 | 2010-03-01 |  |  |  |
| 179 | 1.6 | **Fase De fechamento** |  | 5d | 2010-03-02 | 2010-03-08 |  |  |  |
| 180 | 1.6.1 | Revisão de Manual | manual | 2d | 2010-03-02 | 2010-03-03 |  |  |  |
| 181 | 1.6.2 | Teste final | manual | 3d | 2010-03-03 | 2010-03-05 |  |  |  |
| 182 | 2 | Processo Controle de mudanças | manual | 3d | 2010-03-08 | 2010-03-10 |  |  |  |
